# ProjectPlan

Schedule from MS Project, 2012-08-22 to 2012-12-07, A marks actual dates.

## Calendars

- Standard: Mon-Fri 08:00-12:00, 13:00-17:00; Sat-Sun off.

## Schedule

| ID | Task | Type | Duration | Start | Finish | Predecessors | Complete | Remaining | Total slack | Free slack | Constraint |
| --- | --- | --- | --- | --- | --- | --- | --- | --- | --- | --- | --- |
| 1 | Brainstorming |  | 2d | 2012-08-22 A | 2012-08-23 A |  | 100% |  |  |  |  |
| 2 | Preliminary Schematic |  | 6d | 2012-08-22 A | 2012-08-29 A | 1 | 100% |  |  |  |  |
| 3 | Bill of Materials |  | 7d | 2012-08-22 A | 2012-08-30 A | 2 | 100% |  |  |  |  |
| 4 | Order Parts |  | 2d | 2012-08-30 A | 2012-08-31 A | 3 | 100% |  |  |  |  |
| 5 | Breadboard Proof of Concept |  | 10d | 2012-08-31 A | 2012-09-13 A | 4, 2 | 100% |  |  |  |  |
| 6 | Develop Product Specification |  | 4d | 2012-09-10 A | 2012-09-13 A | 3 | 100% |  |  |  | finish no earlier than 2012-09-13 |
| 7 | Gant Chart |  | 5d | 2012-09-06 A | 2012-09-12 A |  | 100% |  |  |  |  |
| 8 | Project Proposal |  | 2w | 2012-09-13 A | 2012-09-26 | 7 | 25% | 1.5w | 37d | 0d |  |
| 9 | Project Plan Presentation |  | 4d | 2012-09-27 | 2012-10-02 | 8 |  |  | 48d |  | start no earlier than 2012-09-27 |
| 10 | Create PCB Packages |  | 5d | 2012-09-06 A | 2012-09-12 A | 3 | 100% |  |  |  |  |
| 11 | Place Parts on PCB |  | 5d | 2012-09-13 A | 2012-09-19 A | 2 | 100% |  |  |  |  |
| 12 | Route Parts on PCB |  | 1d | 2012-09-19 A | 2012-09-19 A | 11 | 100% |  |  |  | start no earlier than 2012-09-19 |
| 13 | Order PCBs - Wait for Arrival |  | 4w | 2012-09-20 A | 2012-10-17 | 10, 11, 12 | 75% | 1w | 11d | 0d |  |
| 14 | Develop Firmware |  | 12w | 2012-08-31 A | 2012-11-22 | 2 | 40% | 7.2w | 11d |  |  |
| 15 | Make Radio Interface Cables |  | 2d | 2012-09-03 | 2012-09-04 | 4 |  |  | 57d |  |  |
| 16 | Populate PCB |  | 3d | 2012-10-18 | 2012-10-22 | 13 |  |  | 11d | 0d |  |
| 17 | Test and Debug Hardware/Firmware |  | 10d | 2012-10-23 | 2012-11-05 | 16 |  |  | 11d | 0d |  |
| 18 | Shop for Enclosures in Ottawa |  | 1d | 2012-09-21 | 2012-09-21 | 11 |  |  | 37d | 18d | start no earlier than 2012-09-21 |
| 19 | Assemble Enclosure |  | 1w | 2012-10-18 | 2012-10-24 | 18, 13 |  |  | 19d | 8d |  |
| 20 | Write Report |  | 13d | 2012-11-06 | 2012-11-22 | 17, 19 |  |  | 11d |  |  |
| 21 | Test/Debug/Improve/Fix | manual | 11d | 2012-11-23 | 2012-12-07 |  |  |  |  |  |  |
